# MagellanTasks

Schedule from MS Project, 2023-03-15 to 2023-09-29, A marks actual dates.

## Calendars

- Standard: Mon-Fri 08:00-12:00, 13:00-17:00; Sat-Sun off.

## Schedule

| ID | WBS | Task | Type | Duration | Start | Finish | Predecessors | Complete | Remaining | Total slack |
| --- | --- | --- | --- | --- | --- | --- | --- | --- | --- | --- |
| 1 | 1 | **ADC** |  | 143d | 2023-03-15 A | 2023-09-29 |  |  | 143d | 0d |
| 2 | 1.1 | Request ADC HW specifications | milestone, manual | 0d | 2023-03-15 A | 2023-03-15 A |  | 100% |  |  |
| 3 | 1.2 | Receive ADC HW specifications | manual | 5d | 2023-03-15 | 2023-03-21 | 2 |  |  |  |
| 4 | 1.3 | Design ADC system | manual | 20d | 2023-03-22 | 2023-04-18 | 3 |  |  |  |
| 5 | 1.4 | Set ADC design review date | manual | 10d | 2023-04-19 | 2023-05-02 | 4 |  |  |  |
| 6 | 1.5 | Review ADC system design | manual | 1d | 2023-05-03 | 2023-05-03 | 5 |  |  |  |
| 7 | 1.6 | Revise ADC system design | manual | 5d | 2023-05-04 | 2023-05-10 | 6 |  |  |  |
| 8 | 1.7 | ADC HW design complete | milestone, manual | 0d | 2023-05-11 | 2023-05-11 | 7 |  |  |  |
| 9 | 1.8 | Purchase ADC HW | manual | 5d | 2023-05-11 | 2023-05-17 | 8 |  |  |  |
| 10 | 1.9 | Wait for ADC HW delivery | manual | 10d | 2023-05-18 | 2023-05-31 | 9 |  |  |  |
| 11 | 1.10 | Submit shop drawings | milestone, manual | 0d | 2023-06-01 | 2023-06-01 | 8 |  |  |  |
| 12 | 1.11 | Shop manufacturing | manual | 15d | 2023-06-01 | 2023-06-21 | 11 |  |  |  |
| 13 | 1.12 | Assemble control system | manual | 5d | 2023-06-22 | 2023-06-28 | 10, 12 |  |  |  |
| 14 | 1.13 | Test control system | manual | 5d | 2023-06-29 | 2023-07-05 | 13 |  |  |  |
| 15 | 1.14 | Revise/tune control system | manual | 5d | 2023-07-06 | 2023-07-12 | 14 |  |  |  |
| 16 | 1.15 | Pack control system | manual | 5d | 2023-07-13 | 2023-07-19 | 15 |  |  |  |
| 17 | 1.16 | Ship control system to Cambridge | manual | 5d | 2023-07-20 | 2023-07-26 | 16 |  |  |  |
| 18 | 1.17 | ADC HW arrives Cambridge | milestone, manual | 0d | 2023-07-27 | 2023-07-27 | 17 |  |  |  |
| 19 | 1.18 | Begin ADC integration | milestone, manual | 0d | 2023-07-27 | 2023-07-27 | 18 |  |  |  |
| 20 | 1.19 | Move ADC to lab area | manual | 5d | 2023-07-27 | 2023-08-02 | 19 |  |  |  |
| 21 | 1.20 | Setup ADC for testing | manual | 5d | 2023-08-03 | 2023-08-09 | 20 |  |  |  |
| 22 | 1.21 | AU travel to Cambridge | manual | 1d | 2023-08-10 | 2023-08-10 | 21 |  |  |  |
| 23 | 1.22 | Integrate ADC control hardware | manual | 5d | 2023-08-11 | 2023-08-17 | 22 |  |  |  |
| 24 | 1.23 | AU Travel to Pasadena | manual | 1d | 2023-08-18 | 2023-08-18 | 23 |  |  |  |
| 25 | 1.24 | Finish ADC control HW documentation | manual | 10d | 2023-08-21 | 2023-09-01 | 24 |  |  |  |
| 26 | 1.25 | Deliver ADC Control HW Docs to software group | milestone, manual | 0d | 2023-09-04 | 2023-09-04 | 25 |  |  |  |
| 27 | 1.26 | Telescope software development | manual | 20d | 2023-09-04 | 2023-09-29 | 26 |  |  |  |
